# Construction Schedule

Schedule from MS Project, 2024-12-30 to 2025-10-06, costs in $.

## Calendars

- Standard: Mon-Fri 08:00-12:00, 13:00-17:00; Sat-Sun off.

## Resources

| Resource | Rate |
| --- | --- |
| Project Manager | 100 |
| Architect | 100 |
| Structural Engineer | 100 |
| Subcontractor (Plumber) | 80 |
| Subcontractor (Electrician) | 80 |
| Subcontractor (Carpenter) | 80 |
| Subcontractor (Painter) | 80 |
| Landscaper | 80 |
| Marketer | 50 |
| Bulldozer x10 (1 day) | 10000 |
| Excavator x10 (1 day) | 10000 |
| Plumbing Equipment (1 system setup) | 3000 |
| Concrete (1 cublic yard) | 150 |
| Paint (1 gallon) | 50 |
| Fencing (1 foot) | 15 |
| Flooring (1 square foot) | 5 |
| Court Nets (1 net) | 1000 |
| General Contractor | 100 |
| Lighting (1 fixture) | 1000 |
| Concrete Mixer (1 day) | 500 |
| Windscreen (1 screen) | 1000 |
| Construction Work (20 workers) | 1000 |
| Miscellaneous Amenity Materials | 50000 |
| Project Assistant | 60 |

## Schedule

| ID | WBS | Task | Duration | Start | Finish | Predecessors | Total slack | Constraint | Resources | Work | Cost |
| --- | --- | --- | --- | --- | --- | --- | --- | --- | --- | --- | --- |
| 1 | 1 | **Prestige Pickleball Construction** | 201d | 2024-12-30 | 2025-10-06 |  | 0d |  |  | 4192h | 10,333,620 |
| 2 | 1.1 | **Phase 1: Pre-Construction** | 45d | 2024-12-30 | 2025-02-28 |  | 0d |  |  | 896h | 79,200 |
| 3 | 1.1.1 | **Feasibility and Planning** | 15d | 2024-12-30 | 2025-01-17 |  | 0d |  |  | 400h | 33,200 |
| 4 | 1.1.1.1 | Finalize funding and budget approvals | 5d | 2024-12-30 | 2025-01-03 |  | 0d | finish no earlier than 2025-01-03 | Project Manager; Project Assistant | 80h | 6,400 |
| 5 | 1.1.1.2 | Complete site analysis | 5d | 2025-01-06 | 2025-01-11 | 4 | 0d | finish no earlier than 2025-01-11 | Architect; Structural Engineer; Project Manager; Project Assistant | 160h | 14,400 |
| 6 | 1.1.1.3 | Obtain necessary permits | 5d | 2025-01-13 | 2025-01-17 | 5 | 0d | finish no earlier than 2025-01-17 | Architect; Marketer; Project Manager; Project Assistant | 160h | 12,400 |
| 7 | 1.1.2 | **Designing and Engineering** | 21d | 2025-01-20 | 2025-02-17 |  | 0d |  |  | 352h | 34,480 |
| 8 | 1.1.2.1 | Design architectural blueprints | 20d | 2025-01-20 | 2025-02-14 | 6 | 0d | finish no earlier than 2025-02-14 | Architect; Structural Engineer | 320h | 32,000 |
| 9 | 1.1.2.2 | Approve designs with stakeholders | 1d | 2025-02-17 | 2025-02-17 | 8 | 0d | finish no earlier than 2025-01-18 | Architect; Project Manager; Marketer; Project Assistant | 32h | 2,480 |
| 10 | 1.1.3 | **Procurement** | 9d | 2025-02-18 | 2025-02-28 |  | 0d |  |  | 144h | 11,520 |
| 11 | 1.1.3.1 | Find construction materials sourcing | 4d | 2025-02-18 | 2025-02-21 | 9 | 0d | finish no earlier than 2025-02-21 | Project Manager; Project Assistant | 64h | 5,120 |
| 12 | 1.1.3.2 | Hire contractors and construction workers | 3d | 2025-02-24 | 2025-02-26 | 11 | 0d |  | Project Manager; Project Assistant | 48h | 3,840 |
| 13 | 1.1.3.3 | Procure equipment | 2d | 2025-02-27 | 2025-02-28 | 12 | 0d | start no earlier than 2025-02-27 | Project Manager; Project Assistant | 32h | 2,560 |
| 15 | 1.2 | **Phase 2: Site Preparation** | 30d | 2025-03-03 | 2025-04-11 |  | 0d |  |  | 720h | 626,400 |
| 16 | 1.2.1 | **Interior Demolition** | 10d | 2025-03-03 | 2025-03-14 |  | 0d |  |  | 240h | 196,000 |
| 17 | 1.2.1.1 | Remove unwanted interior equipment | 5d | 2025-03-03 | 2025-03-07 | 13 | 0d | start no earlier than 2025-03-03 | Structural Engineer; Excavator x10 (1 day) [500%]; General Contractor; Construction Work (20 workers) | 120h | 98,000 |
| 18 | 1.2.1.2 | Prepare spaces for new indoor amenities | 5d | 2025-03-10 | 2025-03-14 | 17 | 0d | finish no earlier than 2025-03-14 | Structural Engineer; Excavator x10 (1 day) [500%]; General Contractor; Construction Work (20 workers) | 120h | 98,000 |
| 19 | 1.2.2 | **Exterior Preparation** | 15d | 2025-03-17 | 2025-04-04 |  | 0d |  |  | 360h | 294,000 |
| 20 | 1.2.2.1 | Remove unwanted exterior features | 5d | 2025-03-17 | 2025-03-21 | 18 | 0d |  | General Contractor; Structural Engineer; Excavator x10 (1 day) [500%]; Construction Work (20 workers) | 120h | 98,000 |
| 21 | 1.2.2.2 | Clear space for outdoor amenities | 3d | 2025-03-24 | 2025-03-26 | 20 | 0d |  | Structural Engineer; Excavator x10 (1 day) [300%]; General Contractor; Construction Work (20 workers) | 72h | 58,800 |
| 22 | 1.2.2.3 | Conduct excavation for outdoor courts and lazy river | 7d | 2025-03-27 | 2025-04-04 | 21 | 0d |  | Structural Engineer; Excavator x10 (1 day) [700%]; General Contractor; Construction Work (20 workers) | 168h | 137,200 |
| 23 | 1.2.3 | **Utility Preparation** | 5d | 2025-04-07 | 2025-04-11 |  | 0d |  |  | 120h | 136,400 |
| 24 | 1.2.3.1 | Update utility connections for increased demand | 5d | 2025-04-07 | 2025-04-11 | 22 | 0d |  | Plumbing Equipment (1 system setup) [3000%]; Subcontractor (Electrician); Subcontractor (Plumber); Construction Work (20 workers) | 120h | 136,400 |
| 26 | 1.3 | **Phase 3: Indoor Facility Construction** | 70d | 2025-04-14 | 2025-07-18 |  | 0d |  |  | 1472h | 4,644,140 |
| 27 | 1.3.1 | **Indoor Court Construction** | 25d | 2025-04-14 | 2025-05-16 |  | 0d |  |  | 392h | 2,569,340 |
| 28 | 1.3.1.1 | Renovate existing building | 10d | 2025-04-14 | 2025-04-25 | 24 | 0d |  | Bulldozer x10 (1 day) [1000%]; Construction Work (20 workers); General Contractor | 160h | 188,000 |
| 29 | 1.3.1.2 | Install concrete bases for indoor courts | 10d | 2025-04-28 | 2025-05-09 | 28 | 0d |  | General Contractor; Concrete (1 cublic yard); Concrete Mixer (1 day) [1000%]; Construction Work (20 workers) | 160h | 2,193,000 |
| 30 | 1.3.1.3 | Apply acrylic surface coatings | 1d | 2025-05-12 | 2025-05-12 | 29 | 0d |  | General Contractor; Paint (1 gallon) [40000%]; Construction Work (20 workers) | 16h | 28,800 |
| 31 | 1.3.1.4 | Paint court lines and markings | 1d | 2025-05-13 | 2025-05-13 | 30 | 0d |  | Paint (1 gallon) [5000%]; Subcontractor (Painter) | 8h | 3,140 |
| 32 | 1.3.1.5 | Install nets and lighting | 3d | 2025-05-14 | 2025-05-16 | 31 | 0d |  | Court Nets (1 net) [3000%]; General Contractor; Lighting (1 fixture) [10000%]; Construction Work (20 workers) | 48h | 156,400 |

| ID | WBS | Task | Duration | Start | Finish | Predecessors | Total slack | Resources | Work | Cost |
| --- | --- | --- | --- | --- | --- | --- | --- | --- | --- | --- |
| 33 | 1.3.2 | **Amenities Construction** | 45d | 2025-05-19 | 2025-07-18 |  | 0d |  | 1080h | 2,074,800 |
| 34 | 1.3.2.1 | Build and furnish massage parlor and locker rooms | 15d | 2025-05-19 | 2025-06-06 | 32 | 0d | Flooring (1 square foot); General Contractor; Subcontractor (Carpenter); Construction Work (20 workers); Miscellaneous Amenity Materials [1000%] | 360h | 991,600 |
| 35 | 1.3.2.2 | Construct poolside dining and bar area | 15d | 2025-06-09 | 2025-06-27 | 34 | 0d | Flooring (1 square foot); General Contractor; Subcontractor (Carpenter); Construction Work (20 workers); Miscellaneous Amenity Materials [500%] | 360h | 641,600 |
| 36 | 1.3.2.3 | Construct lobby, bathrooms, and lounges | 15d | 2025-06-30 | 2025-07-18 | 35 | 0d | Flooring (1 square foot); General Contractor; Subcontractor (Plumber); Construction Work (20 workers); Miscellaneous Amenity Materials | 360h | 441,600 |
| 38 | 1.4 | **Phase 4: Outdoor Facility Construction** | 45d | 2025-07-21 | 2025-09-19 |  | 0d |  | 848h | 3,464,400 |
| 39 | 1.4.1 | **Outdoor Court Construction** | 20d | 2025-07-21 | 2025-08-15 |  | 0d |  | 392h | 1,662,920 |
| 40 | 1.4.1.1 | Renovate existing surroundings | 10d | 2025-07-21 | 2025-08-01 | 36 | 0d | Bulldozer x10 (1 day) [1400%]; Construction Work (20 workers); Excavator x10 (1 day) [1400%]; General Contractor; Landscaper | 240h | 374,400 |
| 41 | 1.4.1.2 | Pour concrete bases for outdoor courts | 3d | 2025-08-04 | 2025-08-06 | 40 | 0d | Concrete (1 cublic yard) [650000%]; General Contractor; Concrete Mixer (1 day) [300%]; Construction Work (20 workers) | 48h | 1,002,900 |
| 42 | 1.4.1.3 | Apply acrylic surface coatings | 2d | 2025-08-07 | 2025-08-08 | 41 | 0d | Paint (1 gallon) [20000%]; Subcontractor (Painter); Construction Work (20 workers) | 32h | 27,280 |
| 43 | 1.4.1.4 | Paint court lines and markings | 1d | 2025-08-11 | 2025-08-11 | 42 | 0d | Paint (1 gallon) [5000%]; Subcontractor (Painter) | 8h | 3,140 |
| 44 | 1.4.1.5 | Install fences, nets, windscreens, and lighting | 4d | 2025-08-12 | 2025-08-15 | 43 | 0d | Court Nets (1 net) [2000%]; Fencing (1 foot); General Contractor; Windscreen (1 screen) [5000%]; Construction Work (20 workers) | 64h | 255,200 |
| 45 | 1.4.2 | **Lazy River Construction** | 15d | 2025-08-18 | 2025-09-05 |  | 0d |  | 320h | 1,542,600 |
| 46 | 1.4.2.1 | Construct lazy river pathways | 10d | 2025-08-18 | 2025-08-29 | 44 | 0d | Excavator x10 (1 day) [1000%]; General Contractor; Landscaper; Construction Work (20 workers); Flooring (1 square foot); Concrete Mixer (1 day) [1000%]; Concrete (1 cublic yard) [500000%] | 240h | 1,349,400 |
| 47 | 1.4.2.2 | Install water filtration and circulation systems | 5d | 2025-09-01 | 2025-09-05 | 46 | 0d | Subcontractor (Plumber); Plumbing Equipment (1 system setup) [5000%]; Construction Work (20 workers) | 80h | 193,200 |
| 48 | 1.4.3 | **Parking Lot Construction** | 10d | 2025-09-08 | 2025-09-19 |  | 0d |  | 136h | 258,880 |
| 49 | 1.4.3.1 | Pave parking lot | 3d | 2025-09-08 | 2025-09-10 | 47 | 0d | Concrete (1 cublic yard) [100000%]; Excavator x10 (1 day) [300%]; General Contractor; Construction Work (20 workers) | 48h | 206,400 |
| 50 | 1.4.3.2 | Paint lines | 3d | 2025-09-11 | 2025-09-15 | 49 | 0d | Paint (1 gallon) [2000%]; Subcontractor (Painter) | 24h | 2,920 |
| 51 | 1.4.3.3 | Install lighting | 4d | 2025-09-16 | 2025-09-19 | 50 | 0d | Subcontractor (Electrician); Lighting (1 fixture) [1500%]; Construction Work (20 workers) | 64h | 49,560 |
| 53 | 1.5 | **Phase 5: Finalization** | 11d | 2025-09-22 | 2025-10-06 |  | 0d |  | 256h | 1,519,480 |
| 54 | 1.5.1 | **Testing and Inspection** | 1d | 2025-09-22 | 2025-09-22 |  | 0d |  | 40h | 3,360 |
| 55 | 1.5.1.1 | Test utility systems, lazy river operations, and court surfaces | 1d | 2025-09-22 | 2025-09-22 | 51 | 0d | General Contractor; Project Manager; Subcontractor (Electrician); Subcontractor (Plumber); Project Assistant | 40h | 3,360 |
| 56 | 1.5.2 | **Marketing** | 10d | 2025-09-23 | 2025-10-06 |  | 0d |  | 216h | 1,516,120 |
| 57 | 1.5.2.1 | Install grand opening decorations and finalize amenities | 4d | 2025-09-23 | 2025-09-26 | 55 | 0d | Marketer; Project Manager; Paint (1 gallon) [2000%]; Miscellaneous Amenity Materials [3000%]; Project Assistant | 96h | 1,507,720 |
| 58 | 1.5.2.2 | Hire and train staff | 3d | 2025-09-29 | 2025-10-01 | 57 | 0d | Marketer; Project Manager; Project Assistant | 72h | 5,040 |
| 59 | 1.5.2.3 | Schedule grand opening pickleball tournament | 1d | 2025-10-02 | 2025-10-02 | 58 | 0d | Marketer; Project Manager; Project Assistant | 24h | 1,680 |
| 60 | 1.5.2.4 | Market memberships and day passes around campus | 1d | 2025-10-03 | 2025-10-03 | 59 | 0d | Marketer | 8h | 400 |
| 61 | 1.5.2.5 | Day of grand opening | 1d | 2025-10-06 | 2025-10-06 | 60 | 0d | Project Manager; Project Assistant | 16h | 1,280 |
